# ipuatsons-WBS

Schedule from MS Project, 2022-08-01 to 2023-02-02, A marks actual dates.

## Calendars

- Standard: Mon-Fri 08:00-12:00, 13:00-17:00; Sat-Sun off.

## Resources

| Resource |
| --- |
| Pasin |
| Sutee |

## Schedule

| ID | WBS | Task | Type | Duration | Start | Finish | Predecessors | Complete | Remaining | Total slack | Resources | Work | Actual work |
| --- | --- | --- | --- | --- | --- | --- | --- | --- | --- | --- | --- | --- | --- |
| 1 | 1 | **Requirement Analysis** |  | 7d | 2022-08-01 A | 2022-08-09 |  | 79% | 1.49d |  |  | 192h | 151.2h |
| 2 | 1.1 | **Develop Project Title** |  | 4d | 2022-08-01 A | 2022-08-04 A |  | 100% |  |  |  | 80h | 80h |
| 3 | 1.1.1 | กำหนดจุดมุ่งหมายและขอบเขตการทำงาน |  | 1d | 2022-08-01 A | 2022-08-01 A |  | 100% |  |  | Pasin; Sutee | 16h | 16h |
| 4 | 1.1.2 | Develop, Review, Approval - Project Title |  | 4d | 2022-08-01 A | 2022-08-04 A |  | 100% |  |  | Pasin; Sutee | 64h | 64h |
| 5 | 1.2 | **Develop Preliminary Project Scope Statement** |  | 3d | 2022-08-05 A | 2022-08-09 | 2 | 64% | 1.09d | 0d |  | 112h | 71.2h |
| 6 | 1.2.1 | กำหนด Functional Requirements |  | 3d | 2022-08-05 A | 2022-08-09 |  | 58% | 1.27d | 0d | Pasin; Sutee | 48h | 27.6h |
| 7 | 1.2.2 | กำหนด Non Functional Requirements |  | 3d | 2022-08-05 A | 2022-08-09 |  | 58% | 1.27d | 0d | Pasin; Sutee | 48h | 27.6h |
| 8 | 1.2.3 | กำหนดระยะเวลาการทำงาน |  | 1d | 2022-08-05 A | 2022-08-05 A |  | 100% |  |  | Pasin; Sutee | 16h | 16h |
| 9 | 2 | **Design Phase** |  | 14d | 2022-08-09 A | 2022-08-29 | 1 | 30% | 9.8d |  |  | 232h | 61.6h |
| 10 | 2.1 | ออกแบบ UX/UI |  | 5d | 2022-08-10 A | 2022-08-16 |  | 50% | 2.5d | 2d | Pasin | 40h | 20h |
| 11 | 2.2 | วาด Use Case Diagram |  | 3d | 2022-08-10 A | 2022-08-12 |  | 22% | 2.35d | 4d | Pasin; Sutee | 48h | 10.4h |
| 12 | 2.3 | ออกแบบ Database |  | 2d | 2022-08-10 A | 2022-08-11 |  | 33% | 1.35d | 5d | Pasin; Sutee | 32h | 10.4h |
| 13 | 2.4 | ประมวลภาพรวมการออกแบบครั้งที่ 1 |  | 0.5d | 2022-08-10 | 2022-08-10 |  |  |  | 6.5d | Pasin; Sutee | 8h |  |
| 14 | 2.5 | วาด Object Diagram |  | 1d | 2022-08-10 A | 2022-08-10 |  | 65% | 0.35d | 6d | Pasin; Sutee | 16h | 10.4h |
| 15 | 2.6 | วาด Sequence Diagram |  | 5d | 2022-08-10 A | 2022-08-16 |  | 13% | 4.35d | 2d | Pasin; Sutee | 80h | 10.4h |
| 16 | 2.7 | ประมวลภาพรวมการออกแบบครั้งที่ 2 |  | 0.5d | 2022-08-10 | 2022-08-10 |  |  |  | 6.5d | Pasin; Sutee | 8h |  |
| 17 | 2.8 | Design Phase เสร็จสิ้น | milestone | 0d | 2022-08-09 | 2022-08-09 |  |  |  | 7d |  |  |  |
| 18 | 3 | **Implementation - 1st** |  | 60d | 2022-08-19 | 2022-11-10 | 9 |  |  |  |  | 1324h |  |
| 19 | 3.1 | **Tools Study** |  | 10d | 2022-08-19 | 2022-09-01 | 9 |  |  |  |  | 120h |  |
| 20 | 3.1.1 | เรียนรู้เกี่ยวกับ Vuet js |  | 2d | 2022-08-19 | 2022-08-22 |  |  |  | 52d | Pasin | 16h |  |
| 21 | 3.1.2 | เรียนรู้เกี่ยวกับ Django |  | 3d | 2022-08-19 | 2022-08-23 |  |  |  | 51d | Pasin | 24h |  |
| 22 | 3.1.3 | เรียนรู้เกี่ยวกับ MongoDB |  | 2d | 2022-08-19 | 2022-08-22 |  |  |  | 52d | Pasin | 16h |  |
| 23 | 3.1.4 | เรียนรู้เกี่ยวกับ Ubuntu Server |  | 1d | 2022-08-19 | 2022-08-19 |  |  |  | 53d | Sutee | 8h |  |
| 24 | 3.1.5 | เรียนรู้เกี่ยวกับ Kubernetes |  | 2d | 2022-08-19 | 2022-08-22 |  |  |  | 52d | Sutee | 16h |  |
| 25 | 3.1.6 | เรียนรู้เกี่ยวกับ Microk8s |  | 1d | 2022-08-19 | 2022-08-19 |  |  |  | 53d | Sutee | 8h |  |
| 26 | 3.1.7 | เรียนรู้เกี่ยวกับ Docker |  | 2d | 2022-08-19 | 2022-08-22 |  |  |  | 52d | Sutee | 16h |  |
| 27 | 3.1.8 | เรียนรู้เกี่ยวกับ Nginx |  | 2d | 2022-08-19 | 2022-08-22 |  |  |  | 52d | Sutee | 16h |  |

| ID | WBS | Task | Duration | Start | Finish | Predecessors | Total slack | Free slack | Resources | Work |
| --- | --- | --- | --- | --- | --- | --- | --- | --- | --- | --- |
| 28 | 3.2 | **Coding Plan** | 1d | 2022-09-02 | 2022-09-02 | 19 | 44d | 0d |  | 40h |
| 29 | 3.2.1 | กำหนด Directory ในการทำงาน | 1d | 2022-09-02 | 2022-09-02 |  | 44d |  | Pasin; Sutee | 16h |
| 30 | 3.2.2 | กำหนด Version ของ framework และ libary ที่ใช้ | 1d | 2022-09-02 | 2022-09-02 |  | 44d |  | Pasin; Sutee | 16h |
| 31 | 3.2.3 | สร้างและตั้งค่า Github | 1d | 2022-09-02 | 2022-09-02 |  | 44d |  | Sutee | 8h |
| 32 | 3.3 | **Account & Login Page** | 3d | 2022-09-05 | 2022-09-07 | 28 | 44d | 0d |  | 88h |
| 33 | 3.3.1 | พัฒนาส่วน Front End | 3d | 2022-09-05 | 2022-09-07 |  | 44d |  | Pasin | 24h |
| 34 | 3.3.2 | พัฒนาส่วน Backend & API | 3d | 2022-09-05 | 2022-09-07 |  | 44d |  | Pasin; Sutee | 48h |
| 35 | 3.3.3 | ทดสอบ | 1d | 2022-09-05 | 2022-09-05 |  | 46d |  | Pasin; Sutee | 16h |
| 36 | 3.4 | **Feed Page** | 5d | 2022-09-08 | 2022-09-14 | 32 | 44d | 0d |  | 128h |
| 37 | 3.4.1 | พัฒนาส่วน Front End | 5d | 2022-09-08 | 2022-09-14 |  | 44d |  | Pasin | 40h |
| 38 | 3.4.2 | พัฒนาส่วน Backend & API | 5d | 2022-09-08 | 2022-09-14 |  | 44d |  | Pasin; Sutee | 80h |
| 39 | 3.4.3 | ทดสอบ | 0.5d | 2022-09-08 | 2022-09-08 |  | 48.5d |  | Pasin; Sutee | 8h |
| 40 | 3.5 | **Drive Page** | 5d | 2022-09-15 | 2022-09-21 | 36 | 44d | 0d |  | 128h |
| 41 | 3.5.1 | พัฒนาส่วน Front End | 5d | 2022-09-15 | 2022-09-21 |  | 44d |  | Pasin | 40h |
| 42 | 3.5.2 | พัฒนาส่วน Backend & API | 5d | 2022-09-15 | 2022-09-21 |  | 44d |  | Pasin; Sutee | 80h |
| 43 | 3.5.3 | ทดสอบ | 0.5d | 2022-09-15 | 2022-09-15 |  | 48.5d |  | Pasin; Sutee | 8h |
| 44 | 3.6 | **Application Page** | 5d | 2022-09-22 | 2022-09-28 | 40 | 44d | 0d |  | 128h |
| 45 | 3.6.1 | พัฒนาส่วน Front End | 5d | 2022-09-22 | 2022-09-28 |  | 44d |  | Pasin | 40h |
| 46 | 3.6.2 | พัฒนาส่วน Backend & API | 5d | 2022-09-22 | 2022-09-28 |  | 44d |  | Pasin; Sutee | 80h |
| 47 | 3.6.3 | ทดสอบ | 0.5d | 2022-09-22 | 2022-09-22 |  | 48.5d |  | Pasin; Sutee | 8h |
| 48 | 3.7 | **Setting Page** | 2d | 2022-09-29 | 2022-09-30 | 44 | 44d | 0d |  | 48h |
| 49 | 3.7.1 | พัฒนาส่วน Front End | 1d | 2022-09-29 | 2022-09-29 |  | 45d |  | Pasin | 8h |
| 50 | 3.7.2 | พัฒนาส่วน Backend & API | 2d | 2022-09-29 | 2022-09-30 |  | 44d |  | Pasin; Sutee | 32h |
| 51 | 3.7.3 | ทดสอบ | 0.5d | 2022-09-29 | 2022-09-29 |  | 45.5d |  | Pasin; Sutee | 8h |

| ID | WBS | Task | Type | Duration | Start | Finish | Predecessors | Total slack | Free slack | Resources | Work |
| --- | --- | --- | --- | --- | --- | --- | --- | --- | --- | --- | --- |
| 52 | 3.8 | **Server** |  | 5d | 2022-09-05 | 2022-09-09 | 28 | 59d | 15d |  | 84h |
| 53 | 3.8.1 | ติดตั้ง OS สำหรับ Server และสร้าง VM |  | 5d | 2022-09-05 | 2022-09-09 |  | 59d |  | Sutee | 40h |
| 54 | 3.8.2 | ตั้งค่า Network ของ Server |  | 5d | 2022-09-05 | 2022-09-09 |  | 59d |  | Sutee | 40h |
| 55 | 3.8.3 | ติดตั้งระบบ Cluster Kubernetes (MicroK8S) |  | 0.5d | 2022-09-05 | 2022-09-05 |  | 63.5d |  | Sutee | 4h |
| 56 | 3.8.4 | สร้างระบบ Dashboard | manual | 1d? | 2022-09-05 | 2022-09-05 |  |  |  |  |  |
| 57 | 3.9 | **1st Test Plan** |  | 3d | 2022-10-03 | 2022-10-05 | 32, 36, 40, 44, 48, 52 | 44d | 0d |  | 80h |
| 58 | 3.9.1 | ทดสอบการเชื่อมต่อกันระหว่าง Web Application และ Server |  | 2d | 2022-10-03 | 2022-10-04 |  | 45d |  | Pasin; Sutee | 32h |
| 59 | 3.9.2 | ประมวลผลการทดสอบ |  | 3d | 2022-10-03 | 2022-10-05 |  | 44d |  | Pasin; Sutee | 48h |
| 60 | 3.10 | **Mock Demo - 1st** |  | 7d | 2022-10-06 | 2022-10-14 | 57 | 44d | 0d |  | 128h |
| 61 | 3.10.1 | ทดสอบการกับกลุ่มผู้ใช้กลุ่มหนึง |  | 7d | 2022-10-06 | 2022-10-14 |  | 44d |  | Pasin; Sutee | 112h |
| 62 | 3.10.2 | ประเมินความพึงพอใจ |  | 1d | 2022-10-06 | 2022-10-06 |  | 50d |  | Pasin; Sutee | 16h |
| 63 | 3.11 | **การปรับปรุงจากผลตอบรับ - 1st** |  | 5d | 2022-10-17 | 2022-10-21 | 60 | 44d | 0d |  | 128h |
| 64 | 3.11.1 | พัฒนาส่วน Front End เพิ่มเติมจากผลการประเมินจากผู้ใช้ |  | 5d | 2022-10-17 | 2022-10-21 |  | 44d |  | Pasin | 40h |
| 65 | 3.11.2 | พัฒนาส่วน Backend & API เพิ่มเติมจากผลการประเมินจากผู้ใช้ |  | 5d | 2022-10-17 | 2022-10-21 |  | 44d |  | Pasin; Sutee | 80h |
| 66 | 3.11.3 | ทดสอบ |  | 0.5d | 2022-10-17 | 2022-10-17 |  | 48.5d |  | Pasin; Sutee | 8h |
| 67 | 3.12 | **เอกสารบทที่ 1-3** |  | 7d | 2022-10-24 | 2022-11-01 | 63 | 44d |  |  | 224h |
| 68 | 3.12.1 | เขียนเอกสาร |  | 7d | 2022-10-24 | 2022-11-01 |  | 44d |  | Pasin; Sutee | 112h |
| 69 | 3.12.2 | ส่งให้อาจารย์ที่ปรึกษา และ แก้ไข |  | 7d | 2022-10-24 | 2022-11-01 |  | 44d |  | Pasin; Sutee | 112h |
| 70 | 4 | **Implementation - 2nd** |  | 60d | 2022-11-11 | 2023-02-02 | 18 |  |  |  | 684h |
| 71 | 4.1 | **Application Page - model processing** |  | 2d | 2022-11-11 | 2022-11-14 | 18 | 37d | 0d |  | 48h |
| 72 | 4.1.1 | พัฒนาส่วน Front End |  | 1d | 2022-11-11 | 2022-11-11 |  | 38d |  | Pasin | 8h |
| 73 | 4.1.2 | พัฒนาส่วน Backend & API |  | 2d | 2022-11-11 | 2022-11-14 |  | 37d |  | Pasin; Sutee | 32h |
| 74 | 4.1.3 | ทดสอบ |  | 0.5d | 2022-11-11 | 2022-11-11 |  | 38.5d |  | Pasin; Sutee | 8h |
| 75 | 4.2 | **Market Place Page** |  | 2d | 2022-11-15 | 2022-11-16 | 71 | 37d | 0d |  | 48h |
| 76 | 4.2.1 | พัฒนาส่วน Front End |  | 1d | 2022-11-15 | 2022-11-15 |  | 38d |  | Pasin | 8h |
| 77 | 4.2.2 | พัฒนาส่วน Backend & API |  | 2d | 2022-11-15 | 2022-11-16 |  | 37d |  | Pasin; Sutee | 32h |
| 78 | 4.2.3 | ทดสอบ |  | 0.5d | 2022-11-15 | 2022-11-15 |  | 38.5d |  | Pasin; Sutee | 8h |

| ID | WBS | Task | Duration | Start | Finish | Predecessors | Total slack | Free slack | Resources | Work |
| --- | --- | --- | --- | --- | --- | --- | --- | --- | --- | --- |
| 79 | 4.3 | **Model Uplaod Page** | 2d | 2022-11-15 | 2022-11-16 | 71 | 37d | 0d |  | 32h |
| 80 | 4.3.1 | พัฒนาส่วน Front End | 1d | 2022-11-15 | 2022-11-15 |  | 38d |  | Pasin | 8h |
| 81 | 4.3.2 | พัฒนาส่วน Backend & API | 2d | 2022-11-15 | 2022-11-16 |  | 37d |  | Sutee | 16h |
| 82 | 4.3.3 | ทดสอบ | 0.5d | 2022-11-15 | 2022-11-15 |  | 38.5d |  | Pasin; Sutee | 8h |
| 83 | 4.4 | **Server** | 1d | 2022-11-11 | 2022-11-11 | 18 | 40d | 3d |  | 12h |
| 84 | 4.4.1 | พัฒนา Performance ของ Server | 1d | 2022-11-11 | 2022-11-11 |  | 40d |  | Sutee | 8h |
| 85 | 4.4.3 | ทดสอบ | 0.5d | 2022-11-11 | 2022-11-11 |  | 40.5d |  | Sutee | 4h |
| 86 | 4.5 | **Mock Demo - 2nd** | 1d | 2022-11-17 | 2022-11-17 | 71, 75, 79, 83 | 37d | 0d |  | 32h |
| 87 | 4.5.1 | ทดสอบการกับกลุ่มผู้ใช้กลุ่มหนึง | 1d | 2022-11-17 | 2022-11-17 |  | 37d |  | Pasin; Sutee | 16h |
| 88 | 4.5.2 | ประเมินความพึงพอใจ | 1d | 2022-11-17 | 2022-11-17 |  | 37d |  | Pasin; Sutee | 16h |
| 89 | 4.6 | **การปรับปรุงจากผลตอบรับ - 2st** | 5d | 2022-11-18 | 2022-11-24 | 86 | 37d | 0d |  | 128h |
| 90 | 4.6.1 | พัฒนาส่วน Front End เพิ่มเติมจากผลการประเมินจากผู้ใช้ | 5d | 2022-11-18 | 2022-11-24 |  | 37d |  | Pasin | 40h |
| 91 | 4.6.2 | พัฒนาส่วน Backend & API เพิ่มเติมจากผลการประเมินจากผู้ใช้ | 5d | 2022-11-18 | 2022-11-24 |  | 37d |  | Pasin; Sutee | 80h |
| 92 | 4.6.3 | ทดสอบ | 0.5d | 2022-11-18 | 2022-11-18 |  | 41.5d |  | Pasin; Sutee | 8h |
| 93 | 4.7 | **Mock Demo - 3rd** | 1d | 2022-11-25 | 2022-11-25 | 89 | 37d | 0d |  | 32h |
| 94 | 4.7.1 | ทดสอบการกับกลุ่มผู้ใช้กลุ่มหนึง | 1d | 2022-11-25 | 2022-11-25 |  | 37d |  | Pasin; Sutee | 16h |
| 95 | 4.7.2 | ประเมินความพึงพอใจ | 1d | 2022-11-25 | 2022-11-25 |  | 37d |  | Pasin; Sutee | 16h |
| 96 | 4.8 | **การปรับปรุงจากผลตอบรับ - 3rd** | 5d | 2022-11-28 | 2022-12-02 | 93 | 37d | 0d |  | 128h |
| 97 | 4.8.1 | พัฒนาส่วน Front End เพิ่มเติมจากผลการประเมินจากผู้ใช้ | 5d | 2022-11-28 | 2022-12-02 |  | 37d |  | Pasin | 40h |
| 98 | 4.8.2 | พัฒนาส่วน Backend & API เพิ่มเติมจากผลการประเมินจากผู้ใช้ | 5d | 2022-11-28 | 2022-12-02 |  | 37d |  | Pasin; Sutee | 80h |
| 99 | 4.8.3 | ทดสอบ | 0.5d | 2022-11-28 | 2022-11-28 |  | 41.5d |  | Pasin; Sutee | 8h |
| 100 | 4.9 | **เอกสารบทที่ 4-6** | 7d | 2022-12-05 | 2022-12-13 | 96 | 37d |  |  | 224h |
| 101 | 4.9.1 | เขียนเอกสาร | 7d | 2022-12-05 | 2022-12-13 |  | 37d |  | Pasin; Sutee | 112h |
| 102 | 4.9.2 | ส่งให้อาจารย์ที่ปรึกษา และ แก้ไข | 7d | 2022-12-05 | 2022-12-13 |  | 37d |  | Pasin; Sutee | 112h |
